How a schedule from MS Project changed from version to version. A marks actual dates.

## Version 1 (saved 2018-04-06, file project.mpp)

Note of the change: Refactor project structure

| ID | WBS | Task | Duration | Start | Finish | Predecessors | Complete | Total float |
| --- | --- | --- | --- | --- | --- | --- | --- | --- |
| 1 | 1 | **فاز اول پروژه** | 2d | 2018-03-05 A | 2018-03-07 A |  | 100% |  |
| 2 | 1.1 | **تهیه پروپوزال** | 0.38d | 2018-03-05 A | 2018-03-05 A |  | 100% |  |
| 3 |  | اهداف و توجیه | 1h | 2018-03-05 A | 2018-03-05 A |  | 100% |  |
| 4 |  | معرفی و مفاد قرارداد | 1h | 2018-03-05 A | 2018-03-05 A |  | 100% |  |
| 5 | 1.1.3 | **معرفی سیستم و توضیح تکنولوژی** | 0.38d | 2018-03-05 A | 2018-03-05 A |  | 100% |  |
| 6 |  | تهیه گزینه راه حل‌های تکنولوژی | 1h | 2018-03-05 A | 2018-03-05 A |  | 100% |  |
| 7 |  | امکان سنجی گزینه ها | 1h | 2018-03-05 A | 2018-03-05 A | 6 | 100% |  |
| 8 |  | انتخاب گزینه راه حل نهایی | 1h | 2018-03-05 A | 2018-03-05 A | 7 | 100% |  |
| 9 | 1.1.4 | **پوشش نیازمندی‌های کارکردی و غیرکارکردی** | 0.12d | 2018-03-05 A | 2018-03-05 A |  | 100% |  |
| 10 |  | نیازمندی‌های کارکردی | 1h | 2018-03-05 A | 2018-03-05 A |  | 100% |  |
| 11 |  | نیازمندی‌های غیرکارکردی | 1h | 2018-03-05 A | 2018-03-05 A |  | 100% |  |
| 12 |  | برآورد زمانی | 1h | 2018-03-05 A | 2018-03-05 A |  | 100% |  |
| 13 |  | برآوردمالی | 1h | 2018-03-05 A | 2018-03-05 A | 12 | 100% |  |
| 14 |  | مراحل اجرای پروژه | 1h | 2018-03-05 A | 2018-03-05 A |  | 100% |  |
| 15 |  | معرفی اعضای گروه | 1h | 2018-03-05 A | 2018-03-05 A |  | 100% |  |
| 16 |  | بیان نمرات اضافی | 1h | 2018-03-05 A | 2018-03-05 A |  | 100% |  |
| 17 |  | بازخوانی و تصحیح پروپوزال و آماده سازی نسخه نهایی | 1d | 2018-03-06 A | 2018-03-06 A | 2 | 100% |  |
| 18 |  | ارسال نسخه نهایی | 0d | 2018-03-07 A | 2018-03-07 A | 17 | 100% |  |
| 19 | 2 | **فاز اولِ نوشتن مورد‌های کاربردی و سناریوی تست** | 24d | 2018-03-07 A | 2018-04-06 | 1 | 32% | 0d |
| 20 |  | طراحی wireframe | 10d | 2018-03-07 A | 2018-03-19 A | 1 | 100% |  |
| 21 | 2.2 | **موارد کاربردی سامانه آتوریزیشن** | 7d | 2018-03-20 A | 2018-03-28 |  | 14% | 0d |
| 22 |  | طراحی نمودار | 1d | 2018-03-20 A | 2018-03-20 A | 20 | 100% |  |
| 23 |  | جدول توضیحات هر مورد کاربردی | 4d | 2018-03-21 | 2018-03-26 | 22 |  | 0d |
| 24 |  | سناریو تست هر مورد کاربردی | 2d | 2018-03-27 | 2018-03-28 | 23 |  | 0d |
| 25 | 2.3 | **موارد کاربردی سامانه مدیریت** | 7d | 2018-03-20 A | 2018-03-28 |  | 14% | 5d |
| 26 |  | طراحی نمودار | 1d | 2018-03-20 A | 2018-03-20 A | 20 | 100% |  |
| 27 |  | جدول توضیحات هر مورد کاربردی | 4d | 2018-03-21 | 2018-03-26 | 26 |  | 5d |
| 28 |  | سناریو تست هر مورد کاربردی | 2d | 2018-03-27 | 2018-03-28 | 27 |  | 5d |
| 29 | 2.4 | **موارد کاربردی سامانه مالی** | 7d | 2018-03-20 A | 2018-03-28 |  | 14% | 6d |
| 30 |  | طراحی نمودار | 1d | 2018-03-20 A | 2018-03-20 A | 20 | 100% |  |
| 31 |  | جدول توضیحات هر مورد کاربردی | 4d | 2018-03-21 | 2018-03-26 | 30 |  | 6d |
| 32 |  | سناریو تست هر مورد کاربردی | 2d | 2018-03-27 | 2018-03-28 | 31 |  | 6d |
| 33 | 2.5 | **موارد کاربردی سامانه جریان کار** | 7d | 2018-03-29 | 2018-04-06 |  |  | 0d |
| 34 |  | طراحی نمودار | 2d | 2018-03-29 | 2018-03-30 | 28 |  | 5d |
| 35 |  | جدول توضیحات هر مورد کاربردی | 7d | 2018-03-29 | 2018-04-06 | 24 |  | 0d |
| 36 |  | سناریو تست هر مورد کاربردی | 1d | 2018-03-29 | 2018-03-29 | 32 |  | 6d |
| 37 | 3 | **فاز دوم نوشتن مورد‌های کاربردی و سناریو تست** | 2d | 2018-04-07 | 2018-04-09 |  |  | 0d |
| 38 | 3.1 | **طراحی سناریو تست سیستمی** | 2d | 2018-04-07 | 2018-04-09 |  |  | 0d |
| 39 |  | تست ارتباط سامانه مالی و جریان کار | 1d | 2018-04-07 | 2018-04-07 | 29, 33, 19 |  | 1d |
| 40 |  | تست ارتباط سامانه مدیریت و مالی | 1d | 2018-04-07 | 2018-04-07 | 25, 33, 19 |  | 0d |
| 41 |  | تست ارتباط سامانه آتوریزیشن و مدیریت | 1d | 2018-04-07 | 2018-04-07 | 21, 25, 19 |  | 1d |
| 42 |  | تست ارتباط سامانه آتورزیشن جریان کار | 1d | 2018-04-09 | 2018-04-09 | 21, 33, 19, 40 |  | 0d |
| 43 | 4 | **پیاده‌سازی و تحویل ERD** | 33.75d | 2018-04-10 | 2018-05-24 |  |  | 0d |
| 44 |  | طراحی پایگاه‌داده | 2d | 2018-04-10 | 2018-04-11 | 37 |  | 0d |
| 45 | 4.2 | **آماده‌سازی بستر توسعه** | 0.75d | 2018-04-12 | 2018-04-12 |  |  | 0d |
| 46 |  | طراحی ساختار فایلی پروژه | 3h | 2018-04-12 | 2018-04-12 | 44 |  | 0d |
| 47 |  | آماده‌سازی بستر git | 1h | 2018-04-12 | 2018-04-12 | 46 |  | 0d |
| 48 |  | آماده‌سازی بستر Continues Integration | 2h | 2018-04-12 | 2018-04-12 | 47 |  | 0d |
| 49 | 4.3 | **پیاده‌سازی میکرو‌سرویس‌ها** | 28d | 2018-04-12 | 2018-05-21 |  |  | 0d |
| 50 | 4.3.1 | **پیاده‌سازی میکروسرویس جریان کار** | 16d | 2018-04-12 | 2018-05-03 |  |  | 0d |
| 51 |  | پیاده‌سازی تست سناریو اصلی | 2d | 2018-04-12 | 2018-04-14 | 44, 45, 42 |  | 0d |
| 52 |  | پیاده‌سازی منطق اصلی | 3d | 2018-04-14 | 2018-04-18 | 51 |  | 0d |
| 53 |  | پیاده‌سازی تست‌ سناریو‌های فرعی | 5d | 2018-04-18 | 2018-04-25 | 52 |  | 0d |
| 54 |  | پیاده‌سازی منطق‌های فرعی | 6d | 2018-04-25 | 2018-05-03 | 53 |  | 0d |
| 55 | 4.3.2 | **پیاده‌سازی میکروسرویس آتوریزیشن** | 12d | 2018-04-12 | 2018-04-27 |  |  | 4d |
| 56 |  | پیاده‌سازی تست سناریو اصلی | 1d | 2018-04-12 | 2018-04-13 | 48 |  | 4d |
| 57 |  | پیاده‌سازی منطق اصلی | 3d | 2018-04-13 | 2018-04-17 | 56 |  | 4d |
| 58 |  | پیاده‌سازی تست‌ سناریو‌های فرعی | 3d | 2018-04-17 | 2018-04-20 | 57 |  | 4d |
| 59 |  | پیاده‌سازی منطق‌های فرعی | 5d | 2018-04-20 | 2018-04-27 | 58 |  | 4d |
| 60 | 4.3.3 | **پیاده‌سازی میکروسرویس مدیریت** | 12d | 2018-05-03 | 2018-05-21 |  |  | 0d |
| 61 |  | پیاده‌سازی تست سناریو اصلی | 1d | 2018-05-03 | 2018-05-04 | 44, 45, 54 |  | 0d |
| 62 |  | پیاده‌سازی منطق اصلی | 3d | 2018-05-04 | 2018-05-09 | 61 |  | 0d |
| 63 |  | پیاده‌سازی تست‌ سناریو‌های فرعی | 3d | 2018-05-09 | 2018-05-14 | 62 |  | 0d |
| 64 |  | پیاده‌سازی منطق‌های فرعی | 5d | 2018-05-14 | 2018-05-21 | 63 |  | 0d |
| 65 | 4.3.3.5 | **پیاده‌سازی میکرو‌سرویس مالی** | 12d | 2018-05-03 | 2018-05-21 |  |  | 0d |
| 66 |  | پیاده‌سازی تست سناریو اصلی | 1d | 2018-05-03 | 2018-05-04 | 44, 45, 54 |  | 0d |
| 67 |  | پیاده‌سازی منطق اصلی | 3d | 2018-05-04 | 2018-05-09 | 66 |  | 0d |
| 68 |  | پیاده‌سازی تست‌ سناریو‌های فرعی | 3d | 2018-05-09 | 2018-05-14 | 67 |  | 0d |
| 69 |  | پیاده‌سازی منطق‌های فرعی | 5d | 2018-05-14 | 2018-05-21 | 68 |  | 0d |
| 70 | 4.3.4 | **پیاده‌سازی تست‌های سیستمی** | 12d | 2018-04-27 | 2018-05-15 |  |  | 4d |

| ID | Task | Duration | Start | Finish | Predecessors | Total float | Constraint |
| --- | --- | --- | --- | --- | --- | --- | --- |
| 71 | پیاده‌سازی تست ارتباط سامانه مالی و جریان کار | 1d | 2018-04-27 | 2018-04-30 | 44, 45, 59 | 4d |  |
| 72 | پیاده‌سازی تست ارتباط سامانه مدیریت و مالی | 3d | 2018-04-30 | 2018-05-03 | 71 | 4d |  |
| 73 | پیاده‌سازی تست ارتباط سامانه آتوریزیشن و مدیریت | 3d | 2018-05-03 | 2018-05-08 | 72 | 4d |  |
| 74 | پیاده‌سازی تست ارتباط سامانه آتورزیشن جریان کار | 5d | 2018-05-08 | 2018-05-15 | 73 | 4d |  |
| 75 | deployment و تحویل | 3d | 2018-05-21 | 2018-05-24 | 49 | 0d | start no earlier than 2018-04-13 |

## Version 2 (saved 2018-04-14, file project.mpp)

Note of the change: use case updatd

Last finish 2018-05-24 → 2018-07-30 (+67d). Complete tasks 18 → 24.

Added:

| ID | Task | Duration | Start | Finish | Predecessors | Resources |
| --- | --- | --- | --- | --- | --- | --- |
| 19 | **طراحی و پیاده سازی تست موردهای کاربردی ارتباط با مدیریت و ثبت نام** | 37d | 2018-03-07 A | 2018-04-23 A |  |  |
| 21 | **مورد کاربردی ثبت نام** | 3d | 2018-04-14 A | 2018-04-17 A |  |  |
| 22 | طراحی نمودار | 1d | 2018-04-14 A | 2018-04-14 A | 20 | Ali; Vahid |
| 23 | جدول توضیحات هر مورد کاربردی | 1d | 2018-04-16 A | 2018-04-16 A | 22 | Ali; Vahid |
| 24 | طراحی و پیاده سازی سناریو تست هر مورد کاربردی | 1d | 2018-04-17 A | 2018-04-17 A | 23 | Ali; Vahid |
| 25 | **مورد کاربردی ارتباط با مدیریت** | 3d | 2018-04-14 A | 2018-04-17 |  |  |
| 26 | طراحی نمودار | 1d | 2018-04-14 A | 2018-04-14 A | 20 | MohamadAmin |
| 27 | جدول توضیحات هر مورد کاربردی | 1d | 2018-04-16 A | 2018-04-16 A | 26 | MohamadAmin |
| 28 | طراحی و سناریو تست هر مورد کاربردی | 3d | 2018-04-17 A | 2018-04-23 A | 27 | MohamadAmin |

Removed: 37 فاز دوم نوشتن مورد‌های کاربردی و سناریو تست

Changed:

| ID | Task | Start | Finish | Duration | Complete | Total float | Predecessors | Other |
| --- | --- | --- | --- | --- | --- | --- | --- | --- |
| 20 | طراحی wireframe |  |  |  |  |  | 1 → none |  |
| 29 | **تکمیل مورد‌های کاربردی و پیاده سازی سناریوی تست** | 2018-03-07 A → 2018-04-30 A (+54d) | 2018-04-06 → 2018-05-28 (+52d) | 24d → 21d | 32% → 9% | 0d → 12d | 1 → none | was named فاز اولِ نوشتن مورد‌های کاربردی و سناریوی تست |
| 30 | **موارد کاربردی سامانه آتوریزیشن** | 2018-03-20 A → 2018-04-30 A (+41d) | 2018-03-28 → 2018-05-08 (+41d) |  |  | 0d → none |  |  |
| 31 | طراحی نمودار | 2018-03-20 A → 2018-04-30 A (+41d) | 2018-03-20 A → 2018-04-30 A (+41d) |  |  |  |  |  |
| 32 | جدول توضیحات هر مورد کاربردی | 2018-03-21 → 2018-05-01 (+41d) | 2018-03-26 → 2018-05-04 (+39d) |  |  |  |  |  |
| 33 | سناریو تست هر مورد کاربردی | 2018-03-27 → 2018-05-07 (+41d) | 2018-03-28 → 2018-05-08 (+41d) |  |  |  |  |  |
| 34 | **موارد کاربردی سامانه مدیریت** | 2018-03-20 A → 2018-04-30 A (+41d) | 2018-03-28 → 2018-05-08 (+41d) |  |  | 5d → none |  |  |
| 35 | طراحی نمودار | 2018-03-20 A → 2018-04-30 A (+41d) | 2018-03-20 A → 2018-04-30 A (+41d) |  |  |  |  |  |
| 36 | جدول توضیحات هر مورد کاربردی | 2018-03-21 → 2018-05-01 (+41d) | 2018-03-26 → 2018-05-04 (+39d) |  |  | 5d → 0d |  |  |
| 37 | سناریو تست هر مورد کاربردی | 2018-03-27 → 2018-05-07 (+41d) | 2018-03-28 → 2018-05-08 (+41d) |  |  | 5d → 0d |  |  |
| 38 | **موارد کاربردی سامانه مالی** | 2018-03-20 A → 2018-04-30 A (+41d) | 2018-03-28 → 2018-05-08 (+41d) |  |  | 6d → none |  |  |
| 39 | طراحی نمودار | 2018-03-20 A → 2018-04-30 A (+41d) | 2018-03-20 A → 2018-04-30 A (+41d) |  |  |  |  |  |
| 40 | جدول توضیحات هر مورد کاربردی | 2018-03-21 → 2018-05-01 (+41d) | 2018-03-26 → 2018-05-04 (+39d) |  |  | 6d → 0d |  |  |
| 41 | سناریو تست هر مورد کاربردی | 2018-03-27 → 2018-05-07 (+41d) | 2018-03-28 → 2018-05-08 (+41d) |  |  | 6d → 0d |  |  |
| 42 | **موارد کاربردی سامانه جریان کار** | 2018-03-29 → 2018-05-09 (+41d) | 2018-04-06 → 2018-05-22 (+46d) | 7d → 10d |  | 0d → 11d |  |  |
| 43 | طراحی نمودار | 2018-03-29 → 2018-05-09 (+41d) | 2018-03-30 → 2018-05-10 (+41d) |  |  | 5d → 11d |  |  |
| 44 | جدول توضیحات هر مورد کاربردی | 2018-03-29 → 2018-05-11 (+43d) | 2018-04-06 → 2018-05-21 (+45d) |  |  | 0d → 11d | 33 → 43 |  |
| 45 | سناریو تست هر مورد کاربردی | 2018-03-29 → 2018-05-22 (+54d) | 2018-03-29 → 2018-05-22 (+54d) |  |  | 6d → 11d | 41 → 44 |  |
| 46 | **طراحی سناریو تست سیستمی** | 2018-04-07 → 2018-05-23 (+46d) | 2018-04-09 → 2018-05-28 (+49d) | 2d → 4d |  | 0d → 12d |  |  |
| 47 | تست ارتباط سامانه مالی و جریان کار | 2018-04-07 → 2018-05-23 (+46d) | 2018-04-07 → 2018-05-23 (+46d) |  |  | 1d → 12d | 38, 42, 29 → 45 |  |
| 48 | تست ارتباط سامانه مدیریت و مالی | 2018-04-07 → 2018-05-24 (+47d) | 2018-04-07 → 2018-05-24 (+47d) |  |  | 0d → 12d | 34, 42, 29 → 47 | resources Vahid → Ali |
| 49 | تست ارتباط سامانه آتوریزیشن و مدیریت | 2018-04-07 → 2018-05-25 (+48d) | 2018-04-07 → 2018-05-25 (+48d) |  |  | 1d → 12d | 30, 34, 29 → 48 | resources MohamadAmin → Ali |
| 50 | تست ارتباط سامانه آتورزیشن جریان کار | 2018-04-09 → 2018-05-28 (+49d) | 2018-04-09 → 2018-05-28 (+49d) |  |  | 0d → 12d | 30, 42, 29, 48 → 49 | resources Vahid → Ali |
| 51 | **پیاده‌سازی و تحویل ERD** | 2018-04-10 → 2018-06-13 (+64d) | 2018-05-24 → 2018-07-30 (+67d) |  |  |  |  |  |
| 52 | طراحی پایگاه‌داده | 2018-04-10 → 2018-06-13 (+64d) | 2018-04-11 → 2018-06-14 (+64d) |  |  |  | فاز دوم نوشتن مورد‌های کاربردی و سناریو تست → none | constraint none → start no earlier than 2018-06-13 |
| 53 | **آماده‌سازی بستر توسعه** | 2018-04-12 → 2018-06-15 (+64d) | 2018-04-12 → 2018-06-15 (+64d) |  |  |  |  |  |
| 54 | طراحی ساختار فایلی پروژه | 2018-04-12 → 2018-06-15 (+64d) | 2018-04-12 → 2018-06-15 (+64d) |  |  |  |  |  |
| 55 | آماده‌سازی بستر git | 2018-04-12 → 2018-06-15 (+64d) | 2018-04-12 → 2018-06-15 (+64d) |  |  |  |  |  |
| 56 | آماده‌سازی بستر Continues Integration | 2018-04-12 → 2018-06-15 (+64d) | 2018-04-12 → 2018-06-15 (+64d) |  |  |  |  |  |
| 57 | **پیاده‌سازی میکرو‌سرویس‌ها** | 2018-04-12 → 2018-06-15 (+64d) | 2018-05-21 → 2018-07-25 (+65d) |  |  |  |  |  |
| 58 | **پیاده‌سازی میکروسرویس جریان کار** | 2018-04-12 → 2018-06-15 (+64d) | 2018-05-03 → 2018-07-09 (+67d) |  |  |  |  |  |
| 59 | پیاده‌سازی تست سناریو اصلی | 2018-04-12 → 2018-06-15 (+64d) | 2018-04-14 → 2018-06-19 (+66d) |  |  |  | 52, 53, 50 → 52, 53 |  |
| 60 | پیاده‌سازی منطق اصلی | 2018-04-14 → 2018-06-19 (+66d) | 2018-04-18 → 2018-06-22 (+65d) |  |  |  |  |  |
| 61 | پیاده‌سازی تست‌ سناریو‌های فرعی | 2018-04-18 → 2018-06-22 (+65d) | 2018-04-25 → 2018-06-29 (+65d) |  |  |  |  |  |
| 62 | پیاده‌سازی منطق‌های فرعی | 2018-04-25 → 2018-06-29 (+65d) | 2018-05-03 → 2018-07-09 (+67d) |  |  |  |  |  |
| 63 | **پیاده‌سازی میکروسرویس آتوریزیشن** | 2018-04-12 → 2018-06-15 (+64d) | 2018-04-27 → 2018-07-03 (+67d) |  |  |  |  |  |
| 64 | پیاده‌سازی تست سناریو اصلی | 2018-04-12 → 2018-06-15 (+64d) | 2018-04-13 → 2018-06-18 (+66d) |  |  |  |  |  |
| 65 | پیاده‌سازی منطق اصلی | 2018-04-13 → 2018-06-18 (+66d) | 2018-04-17 → 2018-06-21 (+65d) |  |  |  |  |  |
| 66 | پیاده‌سازی تست‌ سناریو‌های فرعی | 2018-04-17 → 2018-06-21 (+65d) | 2018-04-20 → 2018-06-26 (+67d) |  |  |  |  |  |
| 67 | پیاده‌سازی منطق‌های فرعی | 2018-04-20 → 2018-06-26 (+67d) | 2018-04-27 → 2018-07-03 (+67d) |  |  |  |  |  |
| 68 | **پیاده‌سازی میکروسرویس مدیریت** | 2018-05-03 → 2018-07-09 (+67d) | 2018-05-21 → 2018-07-25 (+65d) |  |  |  |  |  |
| 69 | پیاده‌سازی تست سناریو اصلی | 2018-05-03 → 2018-07-09 (+67d) | 2018-05-04 → 2018-07-10 (+67d) |  |  |  |  |  |
| 70 | پیاده‌سازی منطق اصلی | 2018-05-04 → 2018-07-10 (+67d) | 2018-05-09 → 2018-07-13 (+65d) |  |  |  |  |  |
| 71 | پیاده‌سازی تست‌ سناریو‌های فرعی | 2018-05-09 → 2018-07-13 (+65d) | 2018-05-14 → 2018-07-18 (+65d) |  |  |  |  |  |
| 72 | پیاده‌سازی منطق‌های فرعی | 2018-05-14 → 2018-07-18 (+65d) | 2018-05-21 → 2018-07-25 (+65d) |  |  |  |  |  |
| 73 | **پیاده‌سازی میکرو‌سرویس مالی** | 2018-05-03 → 2018-07-09 (+67d) | 2018-05-21 → 2018-07-25 (+65d) |  |  |  |  |  |
| 74 | پیاده‌سازی تست سناریو اصلی | 2018-05-03 → 2018-07-09 (+67d) | 2018-05-04 → 2018-07-10 (+67d) |  |  |  |  |  |
| 75 | پیاده‌سازی منطق اصلی | 2018-05-04 → 2018-07-10 (+67d) | 2018-05-09 → 2018-07-13 (+65d) |  |  |  |  |  |
| 76 | پیاده‌سازی تست‌ سناریو‌های فرعی | 2018-05-09 → 2018-07-13 (+65d) | 2018-05-14 → 2018-07-18 (+65d) |  |  |  |  |  |
| 77 | پیاده‌سازی منطق‌های فرعی | 2018-05-14 → 2018-07-18 (+65d) | 2018-05-21 → 2018-07-25 (+65d) |  |  |  |  |  |
| 78 | **پیاده‌سازی تست‌های سیستمی** | 2018-04-27 → 2018-07-03 (+67d) | 2018-05-15 → 2018-07-19 (+65d) |  |  |  |  |  |
| 79 | پیاده‌سازی تست ارتباط سامانه مالی و جریان کار | 2018-04-27 → 2018-07-03 (+67d) | 2018-04-30 → 2018-07-04 (+65d) |  |  |  |  |  |
| 80 | پیاده‌سازی تست ارتباط سامانه مدیریت و مالی | 2018-04-30 → 2018-07-04 (+65d) | 2018-05-03 → 2018-07-09 (+67d) |  |  |  |  |  |
| 81 | پیاده‌سازی تست ارتباط سامانه آتوریزیشن و مدیریت | 2018-05-03 → 2018-07-09 (+67d) | 2018-05-08 → 2018-07-12 (+65d) |  |  |  |  |  |
| 82 | پیاده‌سازی تست ارتباط سامانه آتورزیشن جریان کار | 2018-05-08 → 2018-07-12 (+65d) | 2018-05-15 → 2018-07-19 (+65d) |  |  |  |  |  |
| 83 | deployment و تحویل | 2018-05-21 → 2018-07-25 (+65d) | 2018-05-24 → 2018-07-30 (+67d) |  |  |  |  |  |

## Version 3 (saved 2018-04-14, file project.xml)

Note of the change: wbs updated

Last finish stays 2018-07-30. Complete tasks 24 → 18.

Changed:

| ID | Task | Start | Finish | Duration | Complete | Total float |
| --- | --- | --- | --- | --- | --- | --- |
| 19 | **طراحی و پیاده سازی تست موردهای کاربردی ارتباط با مدیریت و ثبت نام** |  | 2018-04-23 A → 2018-04-23 |  | 100% → 56% | none → 0d |
| 21 | **مورد کاربردی ثبت نام** | 2018-04-14 A → 2018-04-14 | 2018-04-17 A → 2018-04-17 |  | 100% → 0% |  |
| 22 | طراحی نمودار | 2018-04-14 A → 2018-04-14 | 2018-04-14 A → 2018-04-14 |  | 100% → 0% | none → 0d |
| 23 | جدول توضیحات هر مورد کاربردی | 2018-04-16 A → 2018-04-16 | 2018-04-16 A → 2018-04-16 |  | 100% → 0% | none → 0d |
| 24 | طراحی و پیاده سازی سناریو تست هر مورد کاربردی | 2018-04-17 A → 2018-04-17 | 2018-04-17 A → 2018-04-17 |  | 100% → 0% | none → 0d |
| 25 | **مورد کاربردی ارتباط با مدیریت** | 2018-04-14 A → 2018-04-14 |  | 3d → 7d | 100% → 0% |  |
| 26 | طراحی نمودار | 2018-04-14 A → 2018-04-14 | 2018-04-14 A → 2018-04-14 |  | 100% → 0% | none → -4d |
| 27 | جدول توضیحات هر مورد کاربردی | 2018-04-16 A → 2018-04-16 | 2018-04-16 A → 2018-04-16 |  | 100% → 0% | none → -4d |
| 28 | طراحی و سناریو تست هر مورد کاربردی | 2018-04-17 A → 2018-04-17 | 2018-04-23 A → 2018-04-23 |  | 100% → 0% | none → -4d |

## Version 4 (saved 2018-04-14, file project.xml)

Note of the change: WBS updated

Last finish stays 2018-07-30. Complete tasks 18 → 24.

Changed:

| ID | Task | Start | Finish | Complete | Total float |
| --- | --- | --- | --- | --- | --- |
| 19 | **طراحی و پیاده سازی تست موردهای کاربردی ارتباط با مدیریت و ثبت نام** |  | 2018-04-23 A | 56% → 100% | 0d → none |
| 21 | **مورد کاربردی ثبت نام** | 2018-04-14 A | 2018-04-17 A | 0% → 100% |  |
| 22 | طراحی نمودار | 2018-04-14 A | 2018-04-14 A | 0% → 100% | 0d → none |
| 23 | جدول توضیحات هر مورد کاربردی | 2018-04-16 A | 2018-04-16 A | 0% → 100% | 0d → none |
| 24 | طراحی و پیاده سازی سناریو تست هر مورد کاربردی | 2018-04-17 A | 2018-04-17 A | 0% → 100% | 0d → none |
| 25 | **مورد کاربردی ارتباط با مدیریت** | 2018-04-14 A |  | 0% → 100% |  |
| 26 | طراحی نمودار | 2018-04-14 A | 2018-04-14 A | 0% → 100% | -4d → none |
| 27 | جدول توضیحات هر مورد کاربردی | 2018-04-16 A | 2018-04-16 A | 0% → 100% | -4d → none |
| 28 | طراحی و سناریو تست هر مورد کاربردی | 2018-04-17 A | 2018-04-23 A | 0% → 100% | -4d → none |

## Version 5 (saved 2018-04-23, file project.mpp)

Note of the change: wbs updated

Last finish stays 2018-07-30.

Changed:

| ID | Task | Duration | Other |
| --- | --- | --- | --- |
| 22 | طراحی نمودار مورد کاربری |  | was named طراحی نمودار |
| 25 | **مورد کاربردی ارتباط با مدیریت** | 7d → 3d |  |

## Version 6 (saved 2018-06-04, file project.mpp)

Note of the change: wbs updated

Last finish stays 2018-07-30. Complete tasks 24 → 31.

Changed:

| ID | Task | Start | Finish | Complete | Total float |
| --- | --- | --- | --- | --- | --- |
| 29 | **تکمیل مورد‌های کاربردی و پیاده سازی سناریوی تست** |  |  | 9% → 85% |  |
| 30 | **موارد کاربردی سامانه آتوریزیشن** |  | 2018-05-08 A | 14% → 100% |  |
| 32 | جدول توضیحات هر مورد کاربردی | 2018-05-01 A | 2018-05-04 A | 0% → 100% | 0d → none |
| 33 | سناریو تست هر مورد کاربردی | 2018-05-07 A | 2018-05-08 A | 0% → 100% | 0d → none |
| 34 | **موارد کاربردی سامانه مدیریت** |  | 2018-05-08 A | 14% → 100% |  |
| 36 | جدول توضیحات هر مورد کاربردی | 2018-05-01 A | 2018-05-04 A | 0% → 100% | 0d → none |
| 37 | سناریو تست هر مورد کاربردی | 2018-05-07 A | 2018-05-08 A | 0% → 100% | 0d → none |
| 38 | **موارد کاربردی سامانه مالی** |  | 2018-05-08 A | 14% → 100% |  |
| 40 | جدول توضیحات هر مورد کاربردی | 2018-05-01 A | 2018-05-04 A | 0% → 100% | 0d → none |
| 41 | سناریو تست هر مورد کاربردی | 2018-05-07 A | 2018-05-08 A | 0% → 100% | 0d → none |
| 42 | **موارد کاربردی سامانه جریان کار** | 2018-05-09 A |  | 0% → 86% | 11d → 16d |
| 43 | طراحی نمودار | 2018-05-09 A |  | 0% → 80% | 11d → 24d |
| 44 | جدول توضیحات هر مورد کاربردی | 2018-05-11 A | 2018-05-21 A | 0% → 100% | 11d → none |

## Version 7 (saved 2018-06-04, file project.xml)

Note of the change: Merge branch 'master' of gitlab.com:null_group/gspaid

Last finish stays 2018-07-30.

Changed:

| ID | Task | Duration |
| --- | --- | --- |
| 25 | **مورد کاربردی ارتباط با مدیریت** | 3d → 7d |

## Version 8 (saved 2018-06-17, file project.mpp)

Note of the change: Merge branch 'master' of github.com:vdblm/gspaid

Last finish stays 2018-07-30. Complete tasks 31 → 37.

Changed:

| ID | Task | Start | Finish | Duration | Complete | Total float |
| --- | --- | --- | --- | --- | --- | --- |
| 25 | **مورد کاربردی ارتباط با مدیریت** |  |  | 7d → 3d |  |  |
| 29 | **تکمیل مورد‌های کاربردی و پیاده سازی سناریوی تست** |  | 2018-05-28 A |  | 85% → 100% | 12d → none |
| 42 | **موارد کاربردی سامانه جریان کار** |  | 2018-05-22 A |  | 86% → 100% | 16d → none |
| 43 | طراحی نمودار |  | 2018-05-10 A |  | 80% → 100% | 24d → none |
| 45 | سناریو تست هر مورد کاربردی | 2018-05-22 A | 2018-05-22 A |  | 0% → 100% | 12d → none |
| 46 | **طراحی سناریو تست سیستمی** | 2018-05-23 A | 2018-05-28 A |  | 0% → 100% | 12d → none |
| 47 | تست ارتباط سامانه مالی و جریان کار | 2018-05-23 A | 2018-05-23 A |  | 0% → 100% | 12d → none |
| 48 | تست ارتباط سامانه مدیریت و مالی | 2018-05-24 A | 2018-05-24 A |  | 0% → 100% | 12d → none |
| 49 | تست ارتباط سامانه آتوریزیشن و مدیریت | 2018-05-25 A | 2018-05-25 A |  | 0% → 100% | 12d → none |
| 50 | تست ارتباط سامانه آتورزیشن جریان کار | 2018-05-28 A | 2018-05-28 A |  | 0% → 100% | 12d → none |

## Version 9 (saved 2018-06-17, file project.xml)

Note of the change: Merge branch 'master' of github.com:vdblm/gspaid

Last finish stays 2018-07-30.

Changed:

| ID | Task | Duration |
| --- | --- | --- |
| 25 | **مورد کاربردی ارتباط با مدیریت** | 3d → 7d |

## Version 10 (saved 2018-08-27, file project.mpp)

Note of the change: update wbs

Last finish stays 2018-07-30. Complete tasks 37 → 62.

Changed:

| ID | Task | Start | Finish | Duration | Complete | Total float |
| --- | --- | --- | --- | --- | --- | --- |
| 25 | **مورد کاربردی ارتباط با مدیریت** |  |  | 7d → 3d |  |  |
| 51 | **پیاده‌سازی و تحویل ERD** | 2018-06-13 A | 2018-07-30 A |  | 0% → 100% | 0d → none |
| 52 | طراحی پایگاه‌داده | 2018-06-13 A | 2018-06-14 A |  | 0% → 100% | 0d → none |
| 53 | **آماده‌سازی بستر توسعه** | 2018-06-15 A | 2018-06-15 A |  | 0% → 100% | 0d → none |
| 54 | طراحی ساختار فایلی پروژه | 2018-06-15 A | 2018-06-15 A |  | 0% → 100% | 0d → none |
| 55 | آماده‌سازی بستر git | 2018-06-15 A | 2018-06-15 A |  | 0% → 100% | 0d → none |
| 56 | آماده‌سازی بستر Continues Integration | 2018-06-15 A | 2018-06-15 A |  | 0% → 100% | 0d → none |
| 57 | **پیاده‌سازی میکرو‌سرویس‌ها** | 2018-06-15 A | 2018-07-25 A |  | 0% → 100% | 0d → none |
| 58 | **پیاده‌سازی میکروسرویس جریان کار** | 2018-06-15 A | 2018-07-09 A |  | 0% → 100% | 0d → none |
| 59 | پیاده‌سازی تست سناریو اصلی | 2018-06-15 A | 2018-06-19 A |  | 0% → 100% | 0d → none |
| 60 | پیاده‌سازی منطق اصلی | 2018-06-19 A | 2018-06-22 A |  | 0% → 100% | 0d → none |
| 61 | پیاده‌سازی تست‌ سناریو‌های فرعی | 2018-06-22 A | 2018-06-29 A |  | 0% → 100% | 0d → none |
| 62 | پیاده‌سازی منطق‌های فرعی | 2018-06-29 A | 2018-07-09 A |  | 0% → 100% | 0d → none |
| 63 | **پیاده‌سازی میکروسرویس آتوریزیشن** | 2018-06-15 A | 2018-07-03 A |  | 0% → 100% | 4d → none |
| 64 | پیاده‌سازی تست سناریو اصلی | 2018-06-15 A | 2018-06-18 A |  | 0% → 100% | 4d → none |
| 65 | پیاده‌سازی منطق اصلی | 2018-06-18 A | 2018-06-21 A |  | 0% → 100% | 4d → none |
| 66 | پیاده‌سازی تست‌ سناریو‌های فرعی | 2018-06-21 A | 2018-06-26 A |  | 0% → 100% | 4d → none |
| 67 | پیاده‌سازی منطق‌های فرعی | 2018-06-26 A | 2018-07-03 A |  | 0% → 100% | 4d → none |
| 68 | **پیاده‌سازی میکروسرویس مدیریت** | 2018-07-09 A | 2018-07-25 A |  | 0% → 100% | 0d → none |
| 69 | پیاده‌سازی تست سناریو اصلی | 2018-07-09 A | 2018-07-10 A |  | 0% → 100% | 0d → none |
| 70 | پیاده‌سازی منطق اصلی | 2018-07-10 A | 2018-07-13 A |  | 0% → 100% | 0d → none |
| 71 | پیاده‌سازی تست‌ سناریو‌های فرعی | 2018-07-13 A | 2018-07-18 A |  | 0% → 100% | 0d → none |
| 72 | پیاده‌سازی منطق‌های فرعی | 2018-07-18 A | 2018-07-25 A |  | 0% → 100% | 0d → none |
| 73 | **پیاده‌سازی میکرو‌سرویس مالی** | 2018-07-09 A | 2018-07-25 A |  | 0% → 100% | 0d → none |
| 74 | پیاده‌سازی تست سناریو اصلی | 2018-07-09 A | 2018-07-10 A |  | 0% → 100% | 0d → none |
| 75 | پیاده‌سازی منطق اصلی | 2018-07-10 A | 2018-07-13 A |  | 0% → 100% | 0d → none |
| 76 | پیاده‌سازی تست‌ سناریو‌های فرعی | 2018-07-13 A | 2018-07-18 A |  | 0% → 100% | 0d → none |
| 77 | پیاده‌سازی منطق‌های فرعی | 2018-07-18 A | 2018-07-25 A |  | 0% → 100% | 0d → none |
| 78 | **پیاده‌سازی تست‌های سیستمی** | 2018-07-03 A | 2018-07-19 A |  | 0% → 100% | 4d → none |
| 79 | پیاده‌سازی تست ارتباط سامانه مالی و جریان کار | 2018-07-03 A | 2018-07-04 A |  | 0% → 100% | 4d → none |
| 80 | پیاده‌سازی تست ارتباط سامانه مدیریت و مالی | 2018-07-04 A | 2018-07-09 A |  | 0% → 100% | 4d → none |
| 81 | پیاده‌سازی تست ارتباط سامانه آتوریزیشن و مدیریت | 2018-07-09 A | 2018-07-12 A |  | 0% → 100% | 4d → none |
| 82 | پیاده‌سازی تست ارتباط سامانه آتورزیشن جریان کار | 2018-07-12 A | 2018-07-19 A |  | 0% → 100% | 4d → none |
| 83 | deployment و تحویل | 2018-07-25 A | 2018-07-30 A |  | 0% → 100% | 0d → none |
